# Current Schedule

Schedule from MS Project, 2012-03-12 to 2012-04-18, 5 hours a day, A marks actual dates.
Advanced Micro Devices

## Calendars

- Standard: Mon-Sun 08:00-12:00, 13:00-17:00.

## Schedule

| ID | WBS | Task | Type | Duration | Start | Finish | Predecessors | Complete | Remaining | Total slack | Free slack |
| --- | --- | --- | --- | --- | --- | --- | --- | --- | --- | --- | --- |
| 1 | 1 | **HR Suite** |  | 59.5d | 2012-03-12 A | 2012-04-18 |  | 82% | 10.91d | 0d |  |
| 2 | 1.1 | **Time & Attendance Software** |  | 59.5d | 2012-03-12 A | 2012-04-18 |  | 82% | 10.91d | 0d |  |
| 3 | 1.1.1 | **Phase I** |  | 59.5d | 2012-03-12 A | 2012-04-18 |  | 82% | 10.91d | 0d |  |
| 4 | 1.1.1.1 | **Scope** |  | 1.5d | 2012-03-12 A | 2012-03-12 A |  | 100% |  |  |  |
| 5 | 1.1.1.1.1 | Determining project scope |  | 1d | 2012-03-12 A | 2012-03-12 A |  | 100% |  |  |  |
| 6 | 1.1.1.1.2 | Define preliminary resources |  | 1d | 2012-03-12 A | 2012-03-12 A | 5 | 100% |  |  |  |
| 7 | 1.1.1.2 | Scope Complete | milestone | 0d | 2012-03-12 A | 2012-03-12 A | 6, 4 | 100% |  |  |  |
| 8 | 1.1.1.3 | **Analysis** |  | 9d | 2012-03-12 A | 2012-03-18 A | 4, 7 | 100% |  |  |  |
| 9 | 1.1.1.3.1 | Review current infrastructure (HW, SW, ENVIRONMENT) |  | 9d | 2012-03-12 A | 2012-03-18 A |  | 100% |  |  |  |
| 10 | 1.1.1.4 | Analysis complete | milestone | 0d | 2012-03-18 A | 2012-03-18 A | 8 | 100% |  |  |  |
| 11 | 1.1.1.5 | **Design** |  | 20d | 2012-03-18 A | 2012-03-31 | 8, 10 | 99% | 0d | 3.2d | 0d |
| 12 | 1.1.1.5.1 | **Draft preliminary design documents** |  | 11d | 2012-03-18 A | 2012-03-25 A |  | 100% |  |  |  |
| 13 | 1.1.1.5.1.1 | Provide system block diagram |  | 8d | 2012-03-18 A | 2012-03-23 A |  | 100% |  |  |  |
| 14 | 1.1.1.5.1.2 | Provide DB schema |  | 2d | 2012-03-23 A | 2012-03-24 A | 13 | 100% |  |  |  |
| 15 | 1.1.1.5.1.3 | Provide envinronment setup required |  | 1d | 2012-03-24 A | 2012-03-25 A | 14 | 100% |  |  |  |
| 16 | 1.1.1.5.2 | Draft preliminary design documents complete | milestone | 0d | 2012-03-25 | 2012-03-25 | 15, 12 |  |  | 12.2d |  |
| 17 | 1.1.1.5.3 | Obtain feedback/input on design |  | 2d | 2012-03-25 A | 2012-03-26 A | 12, 16 | 100% |  |  |  |
| 18 | 1.1.1.5.4 | **Develop detailed design documents** |  | 7d | 2012-03-26 A | 2012-03-31 A | 17 | 100% |  |  |  |
| 19 | 1.1.1.5.4.1 | Provide detailed block description |  | 5d | 2012-03-26 A | 2012-03-29 A |  | 100% |  |  |  |
| 20 | 1.1.1.5.4.2 | Provide UI description |  | 2d | 2012-03-29 A | 2012-03-31 A | 19 | 100% |  |  |  |
| 21 | 1.1.1.5.5 | Develop detailed design documents complete | milestone | 0d | 2012-03-31 A | 2012-03-31 A | 20, 18 | 100% |  |  |  |
| 22 | 1.1.1.6 | Design complete | milestone | 0d | 2012-03-31 | 2012-03-31 | 17, 11 |  |  | 3.2d | 0d |
| 23 | 1.1.1.7 | **Implementation** |  | 18d | 2012-03-31 A | 2012-04-11 | 11, 22 | 93% | 1.2d | 1.6d | 0d |
| 24 | 1.1.1.7.1 | Employer |  | 2d | 2012-03-31 A | 2012-04-01 A |  | 100% |  |  |  |
| 25 | 1.1.1.7.2 | Employee |  | 2d | 2012-04-01 A | 2012-04-02 A | 24 | 100% |  |  |  |
| 26 | 1.1.1.7.3 | Roster (Shift Planning) |  | 4d | 2012-04-02 A | 2012-04-05 A | 25 | 100% |  |  |  |
| 27 | 1.1.1.7.4 | Attendance |  | 6d | 2012-04-05 A | 2012-04-08 | 26 | 80% | 1.2d | 5.6d |  |
| 28 | 1.1.1.7.5 | Reporting |  | 4d | 2012-04-08 A | 2012-04-11 A | 27 | 100% |  |  |  |
| 29 | 1.1.1.8 | Implementation complete | milestone | 0d | 2012-04-11 | 2012-04-11 | 23 |  |  | 1.6d | 0d |

| ID | WBS | Task | Type | Duration | Start | Finish | Predecessors | Complete | Remaining | Total slack |
| --- | --- | --- | --- | --- | --- | --- | --- | --- | --- | --- |
| 30 | 1.1.1.9 | **Testing** |  | 2d | 2012-04-11 A | 2012-04-12 | 29 | 60% | 0.8d | 0d |
| 31 | 1.1.1.9.1 | Integration Testing |  | 2d | 2012-04-11 A | 2012-04-12 |  | 60% | 0.8d | 0d |
| 32 | 1.1.1.10 | Testing complete | milestone | 0d | 2012-04-12 | 2012-04-12 | 30 |  |  | 0d |
| 33 | 1.1.1.11 | **Deployment** |  | 9d | 2012-04-12 | 2012-04-18 | 23, 32 |  |  | 0d |
| 34 | 1.1.1.11.1 | **Pilot** |  | 4d | 2012-04-12 | 2012-04-15 |  |  |  | 0d |
| 35 | 1.1.1.11.1.1 | Deploy & Test component |  | 2d | 2012-04-12 | 2012-04-13 |  |  |  | 0d |
| 36 | 1.1.1.11.1.2 | Obtain & Evaluate feedback |  | 2d | 2012-04-13 | 2012-04-15 | 35 |  |  | 0d |
| 37 | 1.1.1.11.2 | Pilot complete | milestone | 0d | 2012-04-15 | 2012-04-15 | 34 |  |  | 0d |
| 38 | 1.1.1.11.3 | **Final deployment** |  | 5d | 2012-04-15 | 2012-04-18 | 37 |  |  | 0d |
| 39 | 1.1.1.11.3.1 | Communicate impact |  | 1d | 2012-04-15 | 2012-04-15 |  |  |  | 0d |
| 40 | 1.1.1.11.3.2 | Deploy & Test component |  | 2d | 2012-04-15 | 2012-04-16 | 39 |  |  | 0d |
| 41 | 1.1.1.11.3.3 | Obtain feedback |  | 2d | 2012-04-16 | 2012-04-18 | 40 |  |  | 0d |
| 42 | 1.1.1.11.4 | Final deployment complete | milestone | 0d | 2012-04-18 | 2012-04-18 | 41, 38 |  |  | 0d |
| 43 | 1.1.1.12 | Deployment complete | milestone | 0d | 2012-04-18 | 2012-04-18 | 33 |  |  | 0d |
